# Elder Real Estate Education & Marketing Project

Schedule from MS Project, 2025-04-14 to 2025-06-27, costs in $.
The duration of the critical path is 55.5 days.

## Calendars

- Standard: Mon-Fri 08:00-12:00, 13:00-17:00; Sat-Sun off.

## Resources

| Resource | Rate |
| --- | --- |
| Megna | 38 |
| Gavin | 39 |
| Akshat | 39 |
| Minhao | 39 |
| Nidhin | 39 |
| Aliha | 40 |

## Schedule

| ID | WBS | Task | Type | Duration | Start | Finish | Predecessors | Total slack | Resources | Work | Cost | Activity Type |
| --- | --- | --- | --- | --- | --- | --- | --- | --- | --- | --- | --- | --- |
| 1 | 1 | **Planning & Research Phase** |  | 6d? | 2025-04-14 | 2025-04-21 |  |  |  | 64h | 2,500 |  |
| 2 | 1.1 | Conduct stakeholder alignment meeting |  | 2d? | 2025-04-14 | 2025-04-15 |  | 0d | Megna [50%]; Nidhin [50%] | 16h | 616 | Duration-Driven |
| 3 | 1.2 | Perform content needs analysis |  | 3d? | 2025-04-16 | 2025-04-18 | 2 | 0d | Akshat [75%]; Minhao [50%] | 24h | 936 | Work-Driven |
| 4 | 1.3 | Develop project schedule and WBS |  | 3d? | 2025-04-17 | 2025-04-21 | 3SS+1d | 0d | Aliha [50%]; Gavin [50%] | 24h | 948 | Work-Driven |
| 5 | 2 | **Education Materials** |  | 9d? | 2025-04-22 | 2025-05-02 | 4 | 0d |  | 92h | 3,592 |  |
| 6 | 2.1 | Create draft educational materials |  | 5d? | 2025-04-22 | 2025-04-28 | 4 | 0d | Akshat [60%]; Megna [50%] | 44h | 1,696 | Work-Driven |
| 7 | 2.2 | Review and revise materials with sponsor |  | 6d? | 2025-04-25 | 2025-05-02 | 6FS-2d | 0d | Aliha [50%]; Minhao [50%] | 48h | 1,896 | Duration-Driven |
| 8 | 2.3 | Milestone: Educational Materials Finalized | milestone | 0d? | 2025-05-02 | 2025-05-02 | 7 | 0d |  |  |  |  |
| 9 | 3 | **Community Workshops Design** |  | 9d? | 2025-05-05 | 2025-05-15 | 8 | 0d |  | 57.33h | 2,232 |  |
| 10 | 3.1 | Design workshop agenda and materials |  | 5d? | 2025-05-05 | 2025-05-09 | 8 | 0d | Gavin [41.7%]; Minhao [41.7%] | 33.33h | 1,300 | Work-Driven |
| 11 | 3.2 | Develop virtual workshop prototype |  | 3d? | 2025-05-12 | 2025-05-14 | 10 | 0d | Megna [33.3%]; Nidhin [33.3%] | 16h | 616 | Work-Driven |
| 12 | 3.3 | Develop final workshop prototype |  | 1d? | 2025-05-15 | 2025-05-15 | 11 | 0d | Akshat [50%]; Aliha [50%] | 8h | 316 | Work-Driven |
| 13 | 3.4 | Milestone: Workshop Design Completed | milestone | 0d? | 2025-05-15 | 2025-05-15 | 12 | 0d |  |  |  |  |
| 14 | 4 | **Elder Real Estate Toolkit** |  | 7.5d? | 2025-05-16 | 2025-05-27 | 13 | 0d |  | 60h | 2,320 |  |
| 15 | 4.1 | Develop toolkit content and format |  | 5d? | 2025-05-16 | 2025-05-22 | 13 | 0d | Akshat [50%]; Megna [50%] | 40h | 1,540 | Work-Driven |
| 16 | 4.2 | Finalize toolkit content and format |  | 2.5d? | 2025-05-23 | 2025-05-27 | 15 | 0d | Gavin [50%]; Minhao [50%] | 20h | 780 | Work-Driven |
| 17 | 4.3 | Milestone: Toolkit Ready for Distribution | milestone | 0d? | 2025-05-27 | 2025-05-27 | 16 | 0d |  |  |  |  |
| 18 | 5 | **Awareness Campaign** |  | 12d? | 2025-05-27 | 2025-06-12 | 17 | 0d |  | 96h | 3,772 |  |
| 19 | 5.1 | Create compaign content and materials |  | 7d? | 2025-05-27 | 2025-06-05 | 17 | 0d | Aliha [50%]; Nidhin [50%] | 56h | 2,212 | Work-Driven |
| 20 | 5.2 | Finalize compaign plan and materials |  | 5d? | 2025-06-05 | 2025-06-12 | 19 | 0d | Akshat [75%]; Gavin [50%] | 40h | 1,560 | Work-Driven |
| 21 | 5.3 | Milestone: Campaign Plan Approved | milestone | 0d? | 2025-06-12 | 2025-06-12 | 20 | 0d |  |  |  |  |
| 22 | 6 | **Strategic Partnerships** |  | 7d? | 2025-06-12 | 2025-06-23 | 21 | 0d |  | 56h | 2,156 |  |
| 23 | 6.1 | Identify potential partners and develop outreach plan |  | 7d? | 2025-06-12 | 2025-06-23 | 21 | 0d | Megna [50%]; Nidhin [50%] | 56h | 2,156 | Work-Driven |
| 24 | 6.2 | Milestone: Partner Outreach Plan Completed | milestone | 0d? | 2025-06-23 | 2025-06-23 | 23 | 0d |  |  |  |  |

Notes:
- 1: Summary Task
- 3: Basis of Estimate: Past experience reviewing AARP reports and HUD elder housing briefs. Justification: Effort-driven based on document review volume and stakeholder interviews.
- 4: Once the analysis starts the work on creating the WBS can also start.
- 5: Summary Task
- 6: Basis of Estimate: Based on prior campaign content writing time (2 hrs/page, 24 pages). Justification: Effort-driven content creation workload defines total hours required.
- 7: Review can begin one day after the draft starts. The creater and reviewer can work parallely on these tasks
- 9: Summary Task
- 10: Basis of Estimate: Historical planning data from real estate seminar (5 hrs avg per session). / Justification: Effort-driven involves material preparation and agenda drafting.
- 11: Basis of Estimate: Mock-up creation time benchmarked from online workshop developers. / Justification: Effort-driven creation time depends on mock-up design iterations.
- 12: Proptype or the mock-up is a crucial deliverable and must complete by this date to keep the project on target and on budget.
- 14: Summary Task
- 15: Basis of Estimate: Experience from previous toolkit projects (4 hrs per item, 14 items). / Justification: Effort-driven structured by toolkit item count and format design time.
- 16: Basis of Estimate: Finalization sessions typically take 1 hr/item (20 items total). / Justification: Effort-driven format refinement and review estimated per item.
- 18: Summary Task
- 19: Basis of Estimate: Previous campaign media creation benchmarks from Hootsuite data. / Justification: Effort-driven creation of multiple materials requires steady input.
- 20: Basis of Estimate: Marketing expert estimate from previous Northeastern campaign case. / Justification: Effort-driven plan needs coordination across campaign elements.
- 22: Summary Tasks
- 23: Basis of Estimate: Partner research takes about 4 hrs/partner; plan needs about 40 hrs drafting. / Justification: Effort-driven outreach research and drafting are labor-intensive.

| ID | WBS | Task | Type | Duration | Start | Finish | Predecessors | Total slack | Resources | Work | Cost | Activity Type |
| --- | --- | --- | --- | --- | --- | --- | --- | --- | --- | --- | --- | --- |
| 25 | 7 | **Impact Assessment** |  | 4d? | 2025-06-23 | 2025-06-27 | 24 | 0d |  | 32h | 1,252 |  |
| 26 | 7.1 | Develop draft pre surveys |  | 3d? | 2025-06-23 | 2025-06-26 | 24 | 0d | Gavin [50%]; Minhao [50%] | 24h | 936 | Work-Driven |
| 27 | 7.2 | Create survey distribution plan |  | 1d? | 2025-06-26 | 2025-06-27 | 26 | 0d | Akshat [50%]; Aliha [50%] | 8h | 316 | Work-Driven |
| 28 | 7.3 | Milestone: Project Completion | milestone | 0d? | 2025-06-27 | 2025-06-27 | 27 | 0d |  |  |  |  |

Notes:
- 25: Summary Tasks
- 26: Basis of Estimate: Survey creation based on Qualtrics sample templates and expert input. / Justification: Effort-driven designing surveys involves both creation and testing.
- 27: Basis of Estimate: Distribution planning modeled after local health initiative plans. / Justification: Effort-driven planning involves logistics, timing, and medium selection.
